# 1150080123_B6

Schedule from MS Project, 2023-04-10 to 2023-05-26, status date 2023-04-28, costs in $, A marks actual dates.

## Calendars

- Standard: Mon-Fri 08:00-12:00, 13:00-17:00; Sat-Sun off.

## Resources

| Resource | Group | Rate |
| --- | --- | --- |
| Ngô Thảo Vy | Lập trình viên | 40 |
| Nguyễn Thị Thanh Hiền | Lập trình viên | 30 |
| Nguyễn Thị Bạch Viên | Thiết kế | 30 |
| Lê Vũ Kiệt | Lập trình viên | 35 |
| Trần Trọng Hiếu | Kiểm thử | 30 |

## Schedule

| ID | WBS | Task | Duration | Start | Finish | Predecessors | Complete | Remaining | Baseline start | Baseline finish | Baseline duration | Total slack | Free slack | Constraint | Resources | Work | Actual work | Cost | Baseline cost | Actual cost |
| --- | --- | --- | --- | --- | --- | --- | --- | --- | --- | --- | --- | --- | --- | --- | --- | --- | --- | --- | --- | --- |
| 1 | 1 | **Giai đoạn 1 – Khởi động dự án** | 4d | 2023-04-10 A | 2023-04-13 A |  | 100% |  | 2023-04-10 | 2023-04-13 | 4d |  |  |  |  | 56h | 56h | 2,000 | 2,000 | 2,000 |
| 2 | 1.1 | Tổ chức cuộc họp khởi động dự án | 1d | 2023-04-10 A | 2023-04-10 A |  | 100% |  | 2023-04-10 | 2023-04-10 | 1d |  |  |  | Ngô Thảo Vy | 8h | 8h | 320 | 320 | 320 |
| 3 | 1.2 | Thu thập và xác định yêu cầu tổng quan | 3d | 2023-04-11 A | 2023-04-13 A | 2 | 100% |  | 2023-04-11 | 2023-04-13 | 3d |  |  |  | Ngô Thảo Vy; Nguyễn Thị Thanh Hiền | 48h | 48h | 1,680 | 1,680 | 1,680 |
| 4 | 2 | **Giai đoạn 2 – Thiết kế hệ thống** | 5d | 2023-04-14 A | 2023-04-20 |  | 71% | 1.44d | 2023-04-14 | 2023-04-20 | 5d | 3d |  |  |  | 104h | 70.4h | 3,600 | 3,600 | 2,400 |
| 5 | 2.1 | Thiết kế khung giao diện người dùng | 5d | 2023-04-14 A | 2023-04-20 | 3 | 80% | 1d | 2023-04-14 | 2023-04-20 | 5d | 2d | 0d |  | Nguyễn Thị Bạch Viên | 40h | 32h | 1,200 | 1,200 | 960 |
| 6 | 2.2 | Thiết kế kiến trúc tổng thể hệ thống | 4d | 2023-04-14 A | 2023-04-19 | 3 | 60% | 1.6d | 2023-04-14 | 2023-04-19 | 4d | 4d | 0d |  | Ngô Thảo Vy; Lê Vũ Kiệt | 64h | 38.4h | 2,400 | 2,400 | 1,440 |
| 7 | 3 | **Giai đoạn 3 – Phát triển phần mềm** | 15d | 2023-04-20 A | 2023-05-10 |  | 25% | 11.25d | 2023-04-20 | 2023-05-10 | 15d | 0d |  |  |  | 384h | 96h | 13,200 | 13,200 | 3,200 |
| 8 | 3.1 | Lập trình chức năng Backend | 10d | 2023-04-20 A | 2023-05-03 | 6 | 40% | 6d | 2023-04-20 | 2023-05-03 | 10d | 1d |  |  | Lê Vũ Kiệt; Nguyễn Thị Thanh Hiền | 160h | 64h | 5,200 | 5,200 | 2,080 |
| 9 | 3.2 | Lập trình chức năng Frontend | 10d | 2023-04-21 A | 2023-05-04 | 5 | 20% | 8d | 2023-04-21 | 2023-05-04 | 10d | 0d |  |  | Ngô Thảo Vy; Nguyễn Thị Bạch Viên | 160h | 32h | 5,600 | 5,600 | 1,120 |
| 10 | 3.3 | Tích hợp các thành phần hệ thống | 4d | 2023-05-05 | 2023-05-10 | 9, 8 |  |  | 2023-05-05 | 2023-05-10 | 4d | 0d |  |  | Lê Vũ Kiệt; Ngô Thảo Vy | 64h |  | 2,400 | 2,400 |  |
| 11 | 4 | **Giai đoạn 4 – Kiểm thử hệ thống** | 8d | 2023-05-11 | 2023-05-22 |  |  |  | 2023-05-11 | 2023-05-22 | 8d | 0d |  |  |  | 112h |  | 3,360 | 3,360 |  |
| 12 | 4.1 | Lập kế hoạch và kịch bản kiểm thử | 2d | 2023-05-11 | 2023-05-12 | 10 |  |  | 2023-05-11 | 2023-05-12 | 2d | 0d |  |  | Trần Trọng Hiếu | 16h |  | 480 | 480 |  |
| 13 | 4.2 | Thực hiện kiểm thử tổng thể hệ thống | 6d | 2023-05-15 | 2023-05-22 | 12 |  |  | 2023-05-15 | 2023-05-22 | 6d | 0d |  |  | Trần Trọng Hiếu; Nguyễn Thị Thanh Hiền | 96h |  | 2,880 | 2,880 |  |
| 14 | 5 | **Giai đoạn 5 – Triển khai và nghiệm thu** | 4d | 2023-05-23 | 2023-05-26 |  |  |  | 2023-05-23 | 2023-05-26 | 4d | 0d |  |  |  | 64h |  | 2,280 | 2,280 |  |
| 15 | 5.1 | Nghiệm thu và ký duyệt (UAT & Sign-off) | 3d | 2023-05-23 | 2023-05-25 | 13 |  |  | 2023-05-23 | 2023-05-25 | 3d | 0d |  |  | Ngô Thảo Vy; Trần Trọng Hiếu | 48h |  | 1,680 | 1,680 |  |
| 16 | 5.2 | Triển khai chính thức (Go-live) | 1d | 2023-05-26 | 2023-05-26 | 15 |  |  | 2023-05-26 | 2023-05-26 | 1d | 0d |  |  | Ngô Thảo Vy; Lê Vũ Kiệt | 16h |  | 600 | 600 |  |
| 17 | 6 | Thiết kế giao diện chính | 1d | 2023-04-20 | 2023-04-20 |  |  |  | 2023-04-20 | 2023-04-20 | 1d | 26d |  | start no earlier than 2023-04-14 | Ngô Thảo Vy | 8h |  | 320 | 320 |  |
